# Gantt EPSA

How a schedule from GanttProject changed from version to version. A marks actual dates.

## Version 1 (saved 2019-05-22)

Note of the change: gantt

| ID | WBS | Task | Duration | Start | Finish | Predecessors | Complete |
| --- | --- | --- | --- | --- | --- | --- | --- |
| 1 | 1 | **Tops** | 320d | 2019-04-03 | 2020-06-23 |  |  |
| 2 |  | Top Projet | 0d | 2019-04-03 | 2019-04-03 |  |  |
| 3 |  | RVP2 | 0d | 2019-04-03 | 2019-04-03 |  |  |
| 4 |  | Roll Out | 0d | 2019-04-10 | 2019-04-10 |  |  |
| 5 |  | Top Prédim | 0d | 2019-06-12 | 2019-06-12 |  |  |
| 6 |  | Top Appro | 0d | 2019-06-27 | 2019-06-27 |  |  |
| 7 |  | Top Saison | 0d | 2019-09-30 | 2019-09-30 |  |  |
| 8 |  | Top Maquette | 0d | 2019-05-01 | 2019-05-01 |  |  |
| 9 |  | Top Synthèse | 0d | 2019-10-02 | 2019-10-02 |  |  |
| 10 |  | Top Copeau 1 | 0d | 2019-11-06 | 2019-11-06 |  |  |
| 11 |  | Top Copeau 2 | 0d | 2019-11-20 | 2019-11-20 |  |  |
| 12 |  | Top Organe | 0d | 2020-02-05 | 2020-02-05 |  |  |
| 13 |  | Top Véhicule | 0d | 2020-02-19 | 2020-02-19 |  |  |
| 14 |  | Top Moteur | 0d | 2020-03-04 | 2020-03-04 |  |  |
| 15 |  | Top Qualif | 0d | 2020-03-17 | 2020-03-17 |  |  |
| 16 |  | Top Compet | 0d | 2020-06-24 | 2020-06-24 |  |  |
| 17 | 2 | **Livrables** | 23d | 2019-05-08 | 2019-06-07 |  | 17% |
| 18 |  | D2I | 5d | 2019-05-08 | 2019-05-14 |  | 100% |
| 19 |  | MSP | 5d | 2019-05-08 | 2019-05-14 |  | 50% |
| 20 |  | CdCF | 8d | 2019-05-15 | 2019-05-24 | 18, 19 |  |
| 21 |  | KPI | 5d | 2019-05-27 | 2019-05-31 | 20 |  |
| 22 |  | CCA | 5d | 2019-05-27 | 2019-05-31 | 20 |  |
| 23 |  | MIP-3D | 5d | 2019-06-03 | 2019-06-07 | 21, 22 |  |
| 24 |  | Rapport de PE | 10d | 2019-05-22 | 2019-06-04 |  |  |
| 25 | 3 | **Frame** | 43d | 2019-05-08 | 2019-07-05 |  | 25% |
| 26 |  | Finir BOM | 4d | 2019-05-08 | 2019-05-13 |  | 100% |
| 27 |  | Recontacter Tachon | 7d | 2019-05-08 | 2019-05-16 |  | 100% |
| 28 |  | Continuer test chassis surfacique | 33d | 2019-05-22 | 2019-07-05 |  |  |
| 29 | 4 | **Aéro** | 30d | 2019-05-08 | 2019-06-18 |  | 19% |
| 30 | 4.1 | **Réunion Aéro** | 16d | 2019-05-08 | 2019-05-29 |  | 68% |
| 31 |  | Organiser réunion Aéro 1 | 6d | 2019-05-08 | 2019-05-15 |  | 100% |
| 32 |  | Réunion Aéro 1 | 1d | 2019-05-16 | 2019-05-16 | 31 |  |
| 33 |  | Préparation simulation | 3d | 2019-05-08 | 2019-05-10 |  | 100% |
| 34 |  | Simulation | 4d | 2019-05-13 | 2019-05-16 | 33 | 50% |
| 35 |  | Calcul indicateurs + Demander Simu Accel/Slid | 1d | 2019-05-17 | 2019-05-17 | 34 |  |
| 36 |  | Réunion 2 EPSAéro ou pas | 1d | 2019-05-29 | 2019-05-29 | 35, 60, 61, 79 |  |
| 37 | 4.2 | **Gain de points** | 4d | 2019-05-16 | 2019-05-21 |  | 11% |
| 38 |  | Downforce | 1d | 2019-05-16 | 2019-05-16 |  | 100% |
| 39 |  | Masse | 4d | 2019-05-16 | 2019-05-21 |  |  |
| 40 |  | Centre de gravité | 4d | 2019-05-16 | 2019-05-21 |  |  |
| 41 | 4.3 | **Budget** | 15d | 2019-05-08 | 2019-05-28 |  | 46% |
| 42 |  | Relancer Devis | 5d | 2019-05-08 | 2019-05-14 |  | 100% |
| 43 |  | Devis | 10d | 2019-05-15 | 2019-05-28 | 42 | 20% |
| 44 | 4.4 | **Temps** | 10d | 2019-05-16 | 2019-05-29 |  |  |
| 45 |  | H.Homme | 2d | 2019-05-16 | 2019-05-17 |  |  |
| 46 |  | Fraction | 2d | 2019-05-20 | 2019-05-21 | 45 |  |
| 47 |  | Recrutement | 10d | 2019-05-16 | 2019-05-29 |  |  |
| 48 | 4.5 | **Fallback plan** | 13d | 2019-05-16 | 2019-06-03 |  |  |
| 49 |  | Plans listés | 8d | 2019-05-16 | 2019-05-27 |  |  |
| 50 |  | Plans datés | 1d | 2019-05-28 | 2019-05-28 | 49 |  |
| 51 |  | Perte si annulation | 5d | 2019-05-28 | 2019-06-03 | 49 |  |
| 52 | 4.6 | **Prototypage** | 15d | 2019-05-22 | 2019-06-11 |  |  |
| 53 |  | Réflexion | 5d | 2019-05-22 | 2019-05-28 |  |  |
| 54 |  | Nervure Bois | 10d | 2019-05-29 | 2019-06-11 | 53 |  |
| 55 | 4.7 | **Design du kit** | 20d | 2019-05-22 | 2019-06-18 |  |  |
| 56 |  | Simplifier l'aéro | 20d | 2019-05-22 | 2019-06-18 |  |  |
| 57 | 5 | **LAS** | 40d | 2019-05-08 | 2019-07-02 |  | 41% |
| 58 | 5.1 | **Pneu** | 20d | 2019-05-08 | 2019-06-04 |  | 36% |
| 59 |  | Modèle de pneu | 10d | 2019-05-08 | 2019-05-21 |  | 100% |
| 60 |  | Modèle accélération latérale | 5d | 2019-05-08 | 2019-05-14 |  | 100% |
| 61 |  | Modèle freinage | 10d | 2019-05-15 | 2019-05-28 |  | 20% |
| 62 |  | Modèle Circuit | 7d | 2019-05-22 | 2019-05-30 | 60, 78 |  |
| 63 |  | Analyse Point Performance | 5d | 2019-05-29 | 2019-06-04 | 61 |  |
| 64 |  | Analyse résultat | 5d | 2019-05-29 | 2019-06-04 | 61 |  |
| 65 |  | Matrice de décision | 5d | 2019-05-29 | 2019-06-04 | 59, 60, 61 |  |
| 66 | 5.2 | **Suspension** | 5d | 2019-05-27 | 2019-05-31 |  |  |
| 67 |  | Choix architecture | 5d | 2019-05-27 | 2019-05-31 | 20 |  |
| 68 | 5.3 | **BAR** | 5d | 2019-05-27 | 2019-05-31 |  |  |
| 69 |  | Choix architecture | 5d | 2019-05-27 | 2019-05-31 | 20 |  |
| 70 | 5.4 | **Roue équipée** | 5d | 2019-05-22 | 2019-05-28 |  |  |

| ID | WBS | Task | Duration | Start | Finish | Predecessors | Complete |
| --- | --- | --- | --- | --- | --- | --- | --- |
| 71 |  | CdCF | 5d | 2019-05-22 | 2019-05-28 |  |  |
| 72 | 5.5 | **Optimum Kinematics** | 40d | 2019-05-08 | 2019-07-02 |  | 59% |
| 73 |  | Prise en main | 30d | 2019-05-08 | 2019-06-18 |  | 60% |
| 74 |  | Faire le CR | 40d | 2019-05-08 | 2019-07-02 |  | 59% |
| 75 | 6 | **Motorisation** | 25d | 2019-05-06 | 2019-06-07 |  | 25% |
| 76 | 6.1 | **Modèle** | 13d | 2019-05-08 | 2019-05-24 |  | 43% |
| 77 |  | Optimum Lap | 10d | 2019-05-08 | 2019-05-21 |  |  |
| 78 |  | Modèle Accel | 10d | 2019-05-08 | 2019-05-21 |  | 100% |
| 79 |  | Simulation avec aéro | 3d | 2019-05-22 | 2019-05-24 | 34, 78 |  |
| 80 | 6.2 | **Refroidissement** | 5d | 2019-05-27 | 2019-05-31 |  |  |
| 81 |  | Architecture à définir | 5d | 2019-05-27 | 2019-05-31 |  |  |
| 82 | 6.3 | **Admission** | 10d | 2019-05-27 | 2019-06-07 |  |  |
| 83 |  | Architecture à définir | 10d | 2019-05-27 | 2019-06-07 |  |  |
| 84 | 6.4 | **Echappement** | 10d | 2019-05-27 | 2019-06-07 |  |  |
| 85 |  | Architecture à définir | 10d | 2019-05-27 | 2019-06-07 |  |  |
| 86 | 6.5 | **Circuit d'essence** | 20d | 2019-05-06 | 2019-05-31 |  | 47% |
| 87 |  | Reflexion sur l'éthanol | 20d | 2019-05-06 | 2019-05-31 |  | 50% |
| 88 |  | Sytème de remplissage plus léger | 18d | 2019-05-08 | 2019-05-31 |  | 45% |
| 89 | 7 | **SEISM** | 33d | 2019-05-22 | 2019-07-05 |  |  |
| 90 | 7.1 | **Démarchage** | 7d | 2019-05-22 | 2019-05-30 |  |  |
| 91 |  | Caméra de casque | 7d | 2019-05-22 | 2019-05-30 |  |  |
| 92 | 7.2 | **Faisceau** | 23d | 2019-05-22 | 2019-06-21 |  |  |
| 93 |  | CdCF | 3d | 2019-05-22 | 2019-05-24 |  |  |
| 94 |  | Architecture Faisceau | 5d | 2019-05-27 | 2019-05-31 | 93 |  |
| 95 |  | Faisceau HV | 5d | 2019-06-03 | 2019-06-07 | 94 |  |
| 96 |  | Batterie | 10d | 2019-06-10 | 2019-06-21 | 95 |  |
| 97 |  | Faisceau LV | 10d | 2019-06-03 | 2019-06-14 | 94 |  |
| 98 | 7.3 | **Tableau de bord** | 13d | 2019-05-22 | 2019-06-07 |  |  |
| 99 |  | CdCF | 3d | 2019-05-22 | 2019-05-24 |  |  |
| 100 |  | Architecture | 10d | 2019-05-27 | 2019-06-07 | 99 |  |
| 101 | 7.4 | **Passage de rapport** | 33d | 2019-05-22 | 2019-07-05 |  |  |
| 102 |  | CdCF | 3d | 2019-05-22 | 2019-05-24 |  |  |
| 103 |  | Choix palettes | 10d | 2019-05-27 | 2019-06-07 | 102 |  |
| 104 |  | Conception palettes | 10d | 2019-06-10 | 2019-06-21 | 103 |  |
| 105 |  | CdCF | 3d | 2019-05-22 | 2019-05-24 |  |  |
| 106 |  | Architecture | 10d | 2019-05-27 | 2019-06-07 | 105 |  |
| 107 |  | Commande de boîte | 20d | 2019-06-10 | 2019-07-05 | 106 |  |
| 108 | 7.5 | **Télémétrie** | 23d | 2019-05-22 | 2019-06-21 |  |  |
| 109 |  | CdCF | 3d | 2019-05-22 | 2019-05-24 |  |  |
| 110 |  | Architecture | 10d | 2019-05-27 | 2019-06-07 | 109 |  |
| 111 |  | Choix capteurs | 10d | 2019-06-10 | 2019-06-21 | 110 |  |

## Version 2 (saved 2019-05-25)

Note of the change: Rangement Frame + MAJ Gantt Frame

Last finish stays 2020-06-24.

Added:

| ID | Task | Duration | Start | Finish | Predecessors |
| --- | --- | --- | --- | --- | --- |
| 29 | Cdcf des sous systèmes | 6d | 2019-05-22 | 2019-05-29 |  |
| 30 | KPI et CCA | 6d | 2019-05-30 | 2019-06-06 | 29 |
| 31 | MIP 3D Frame | 15d | 2019-06-07 | 2019-06-27 | 30 |

Changed:

| ID | Task | Complete |
| --- | --- | --- |
| 25 | **Frame** | 25% → 26% |
| 28 | Continuer test chassis surfacique | 0% → 20% |
