# Gantt EPSA

How a schedule from GanttProject changed from version to version. A marks actual dates.

## Version 1 (saved 2019-05-29)

Note of the change: Management

| ID | WBS | Task | Duration | Start | Finish | Predecessors | Complete |
| --- | --- | --- | --- | --- | --- | --- | --- |
| 1 | 1 | **Tops** | 320d | 2019-04-03 | 2020-06-23 |  |  |
| 2 |  | Top Projet | 0d | 2019-04-03 | 2019-04-03 |  |  |
| 3 |  | RVP2 | 0d | 2019-04-03 | 2019-04-03 |  |  |
| 4 |  | Roll Out | 0d | 2019-04-10 | 2019-04-10 |  |  |
| 5 |  | Top Prédim | 0d | 2019-06-12 | 2019-06-12 |  |  |
| 6 |  | Top Appro | 0d | 2019-06-27 | 2019-06-27 |  |  |
| 7 |  | Top Saison | 0d | 2019-09-30 | 2019-09-30 |  |  |
| 8 |  | Top Maquette | 0d | 2019-05-01 | 2019-05-01 |  |  |
| 9 |  | Top Synthèse | 0d | 2019-10-02 | 2019-10-02 |  |  |
| 10 |  | Top Copeau 1 | 0d | 2019-11-06 | 2019-11-06 |  |  |
| 11 |  | Top Copeau 2 | 0d | 2019-11-20 | 2019-11-20 |  |  |
| 12 |  | Top Organe | 0d | 2020-02-05 | 2020-02-05 |  |  |
| 13 |  | Top Véhicule | 0d | 2020-02-19 | 2020-02-19 |  |  |
| 14 |  | Top Moteur | 0d | 2020-03-04 | 2020-03-04 |  |  |
| 15 |  | Top Qualif | 0d | 2020-03-17 | 2020-03-17 |  |  |
| 16 |  | Top Compet | 0d | 2020-06-24 | 2020-06-24 |  |  |
| 17 | 2 | **Livrables** | 23d | 2019-05-08 | 2019-06-07 |  | 17% |
| 18 |  | D2I | 5d | 2019-05-08 | 2019-05-14 |  | 100% |
| 19 |  | MSP | 5d | 2019-05-08 | 2019-05-14 |  | 50% |
| 20 |  | CdCF | 8d | 2019-05-15 | 2019-05-24 | 18, 19 |  |
| 21 |  | KPI | 5d | 2019-05-27 | 2019-05-31 | 20 |  |
| 22 |  | CCA | 5d | 2019-05-27 | 2019-05-31 | 20 |  |
| 23 |  | MIP-3D | 5d | 2019-06-03 | 2019-06-07 | 21, 22 |  |
| 24 |  | Rapport de PE | 10d | 2019-05-22 | 2019-06-04 |  |  |
| 25 | 3 | **Frame** | 43d | 2019-05-08 | 2019-07-05 |  | 26% |
| 26 |  | Finir BOM | 4d | 2019-05-08 | 2019-05-13 |  | 100% |
| 27 |  | Recontacter Tachon | 7d | 2019-05-08 | 2019-05-16 |  | 100% |
| 28 |  | Continuer test chassis surfacique | 33d | 2019-05-22 | 2019-07-05 |  | 20% |
| 29 |  | Cdcf des sous systèmes | 6d | 2019-05-22 | 2019-05-29 |  | 20% |
| 30 |  | KPI et CCA | 6d | 2019-05-30 | 2019-06-06 | 29 |  |
| 31 |  | MIP 3D Frame | 15d | 2019-06-07 | 2019-06-27 | 30 |  |
| 32 | 4 | **Aéro** | 30d | 2019-05-08 | 2019-06-18 |  | 32% |
| 33 | 4.1 | **Réunion Aéro** | 16d | 2019-05-08 | 2019-05-29 |  | 75% |
| 34 |  | Organiser réunion Aéro 1 | 6d | 2019-05-08 | 2019-05-15 |  | 100% |
| 35 |  | Réunion Aéro 1 | 1d | 2019-05-16 | 2019-05-16 | 34 | 100% |
| 36 |  | Préparation simulation | 3d | 2019-05-08 | 2019-05-10 |  | 100% |
| 37 |  | Simulation | 4d | 2019-05-13 | 2019-05-16 | 36 | 50% |
| 38 |  | Calcul indicateurs + Demander Simu Accel/Slid | 1d | 2019-05-17 | 2019-05-17 | 37 |  |
| 39 |  | Réunion 2 EPSAéro ou pas | 1d | 2019-05-29 | 2019-05-29 | 38, 64, 65, 85 |  |
| 40 | 4.2 | **Gain de points** | 17d | 2019-05-16 | 2019-06-07 |  | 3% |
| 41 |  | Downforce | 1d | 2019-05-16 | 2019-05-16 |  | 100% |
| 42 |  | Masse | 17d | 2019-05-16 | 2019-06-07 |  |  |
| 43 |  | Centre de gravité | 12d | 2019-05-16 | 2019-05-31 |  |  |
| 44 | 4.3 | **Budget** | 23d | 2019-05-08 | 2019-06-07 |  | 37% |
| 45 |  | Relancer Devis | 5d | 2019-05-08 | 2019-05-14 |  | 100% |
| 46 |  | Devis | 18d | 2019-05-15 | 2019-06-07 | 45 | 20% |
| 47 | 4.4 | **Temps** | 10d | 2019-05-16 | 2019-05-29 |  |  |
| 48 |  | H.Homme | 2d | 2019-05-16 | 2019-05-17 |  |  |
| 49 |  | Fraction | 2d | 2019-05-20 | 2019-05-21 | 48 |  |
| 50 |  | Recrutement | 10d | 2019-05-16 | 2019-05-29 |  |  |
| 51 | 4.5 | **Fallback plan** | 14d | 2019-05-16 | 2019-06-04 |  | 40% |
| 52 |  | Plans listés | 8d | 2019-05-16 | 2019-05-27 |  | 100% |
| 53 |  | Plans datés | 6d | 2019-05-28 | 2019-06-04 | 52 |  |
| 54 |  | Perte si annulation | 6d | 2019-05-28 | 2019-06-04 | 52 |  |
| 55 | 4.6 | **Prototypage** | 15d | 2019-05-22 | 2019-06-11 |  | 75% |
| 56 |  | Réflexion | 5d | 2019-05-22 | 2019-05-28 |  | 100% |
| 57 |  | Nervure Bois | 10d | 2019-05-29 | 2019-06-11 | 56 | 100% |
| 58 |  | Toile cirée | 5d | 2019-05-29 | 2019-06-04 |  |  |
| 59 | 4.7 | **Design du kit** | 20d | 2019-05-22 | 2019-06-18 |  |  |
| 60 |  | Simplifier l'aéro | 20d | 2019-05-22 | 2019-06-18 |  |  |
| 61 | 5 | **LAS** | 40d | 2019-05-08 | 2019-07-02 |  | 44% |
| 62 | 5.1 | **Pneu** | 20d | 2019-05-08 | 2019-06-04 |  | 43% |
| 63 |  | Modèle de pneu | 10d | 2019-05-08 | 2019-05-21 |  | 100% |
| 64 |  | Modèle accélération latérale | 5d | 2019-05-08 | 2019-05-14 |  | 100% |
| 65 |  | Modèle freinage | 10d | 2019-05-15 | 2019-05-28 |  | 20% |
| 66 |  | Modèle Circuit | 7d | 2019-05-22 | 2019-05-30 | 64, 84 | 50% |
| 67 |  | Analyse Point Performance | 5d | 2019-05-29 | 2019-06-04 | 65 |  |
| 68 |  | Analyse résultat | 5d | 2019-05-29 | 2019-06-04 | 65 |  |
| 69 |  | Matrice de décision | 5d | 2019-05-29 | 2019-06-04 | 63, 64, 65 |  |
| 70 | 5.2 | **Suspension** | 5d | 2019-05-27 | 2019-05-31 |  |  |

| ID | WBS | Task | Duration | Start | Finish | Predecessors | Complete |
| --- | --- | --- | --- | --- | --- | --- | --- |
| 71 |  | Choix architecture | 5d | 2019-05-27 | 2019-05-31 | 20 |  |
| 72 | 5.3 | **BAR** | 5d | 2019-05-27 | 2019-05-31 |  |  |
| 73 |  | Choix architecture | 5d | 2019-05-27 | 2019-05-31 | 20 |  |
| 74 | 5.4 | **Roue équipée** | 5d | 2019-05-22 | 2019-05-28 |  |  |
| 75 |  | CdCF | 5d | 2019-05-22 | 2019-05-28 |  |  |
| 76 | 5.5 | **Optimum Kinematics** | 40d | 2019-05-08 | 2019-07-02 |  | 74% |
| 77 |  | Prise en main | 30d | 2019-05-08 | 2019-06-18 |  | 75% |
| 78 |  | Faire le CR | 40d | 2019-05-08 | 2019-07-02 |  | 74% |
| 79 | 5.6 | **Point de LAS** | 10d | 2019-05-29 | 2019-06-11 |  |  |
| 80 |  | Prise en main de LOTUS | 10d | 2019-05-29 | 2019-06-11 |  |  |
| 81 | 6 | **Motorisation** | 25d | 2019-05-06 | 2019-06-07 |  | 37% |
| 82 | 6.1 | **Modèle** | 13d | 2019-05-08 | 2019-05-24 |  | 96% |
| 83 |  | Optimum Lap | 10d | 2019-05-08 | 2019-05-21 |  | 100% |
| 84 |  | Modèle Accel | 10d | 2019-05-08 | 2019-05-21 |  | 100% |
| 85 |  | Simulation avec aéro | 3d | 2019-05-22 | 2019-05-24 | 37, 84 | 70% |
| 86 | 6.2 | **Refroidissement** | 5d | 2019-05-27 | 2019-05-31 |  |  |
| 87 |  | Architecture à définir | 5d | 2019-05-27 | 2019-05-31 |  |  |
| 88 | 6.3 | **Admission** | 10d | 2019-05-27 | 2019-06-07 |  |  |
| 89 |  | Architecture à définir | 10d | 2019-05-27 | 2019-06-07 |  |  |
| 90 | 6.4 | **Echappement** | 10d | 2019-05-27 | 2019-06-07 |  |  |
| 91 |  | Architecture à définir | 10d | 2019-05-27 | 2019-06-07 |  |  |
| 92 | 6.5 | **Circuit d'essence** | 20d | 2019-05-06 | 2019-05-31 |  | 47% |
| 93 |  | Reflexion sur l'éthanol | 20d | 2019-05-06 | 2019-05-31 |  | 50% |
| 94 |  | Sytème de remplissage plus léger | 18d | 2019-05-08 | 2019-05-31 |  | 45% |
| 95 | 7 | **SEISM** | 33d | 2019-05-22 | 2019-07-05 |  | 15% |
| 96 | 7.1 | **Démarchage** | 7d | 2019-05-22 | 2019-05-30 |  |  |
| 97 |  | Caméra de casque | 7d | 2019-05-22 | 2019-05-30 |  |  |
| 98 | 7.2 | **Faisceau** | 23d | 2019-05-22 | 2019-06-21 |  | 9% |
| 99 |  | CdCF | 3d | 2019-05-22 | 2019-05-24 |  | 100% |
| 100 |  | Architecture Faisceau | 5d | 2019-05-27 | 2019-05-31 | 99 |  |
| 101 |  | Faisceau HV | 5d | 2019-06-03 | 2019-06-07 | 100 |  |
| 102 |  | Batterie | 10d | 2019-06-10 | 2019-06-21 | 101 |  |
| 103 |  | Faisceau LV | 10d | 2019-06-03 | 2019-06-14 | 100 |  |
| 104 | 7.3 | **Tableau de bord** | 13d | 2019-05-22 | 2019-06-07 |  |  |
| 105 |  | CdCF | 3d | 2019-05-22 | 2019-05-24 |  |  |
| 106 |  | Architecture | 10d | 2019-05-27 | 2019-06-07 | 105 |  |
| 107 | 7.4 | **Passage de rapport** | 33d | 2019-05-22 | 2019-07-05 |  | 30% |
| 108 |  | CdCF | 3d | 2019-05-22 | 2019-05-24 |  | 100% |
| 109 |  | Contacter TDN | 3d | 2019-05-27 | 2019-05-29 | 108 | 100% |
| 110 |  | Architecture | 10d | 2019-05-27 | 2019-06-07 | 108 | 50% |
| 111 |  | Commande de boîte | 20d | 2019-06-10 | 2019-07-05 | 110 |  |
| 112 | 7.5 | **Télémétrie** | 23d | 2019-05-22 | 2019-06-21 |  | 13% |
| 113 |  | CdCF | 3d | 2019-05-22 | 2019-05-24 |  | 100% |
| 114 |  | Architecture | 10d | 2019-05-27 | 2019-06-07 | 113 |  |
| 115 |  | Choix capteurs | 10d | 2019-06-10 | 2019-06-21 | 114 |  |

## Version 2 (saved 2019-06-06)

Note of the change: Merge remote-tracking branch 'origin/master'

Last finish stays 2020-06-24. Complete tasks 19 → 21.

Changed:

| ID | Task | Start | Finish | Duration | Complete |
| --- | --- | --- | --- | --- | --- |
| 47 | **Temps** |  | 2019-05-29 → 2019-06-12 (+14d) | 10d → 20d | 0% → 16% |
| 48 | H.Homme |  |  |  | 0% → 100% |
| 49 | Fraction |  |  |  | 0% → 100% |
| 50 | Recrutement |  | 2019-05-29 → 2019-06-12 (+14d) | 10d → 20d |  |
| 86 | **Refroidissement** | 2019-05-27 → 2019-06-03 (+7d) | 2019-05-31 → 2019-06-07 (+7d) |  |  |
| 87 | Architecture à définir | 2019-05-27 → 2019-06-03 (+7d) | 2019-05-31 → 2019-06-07 (+7d) |  |  |

## Version 3 (saved 2019-06-07)

Note of the change: Bordel

Last finish stays 2020-06-24. Complete tasks 21 → 23.

Added:

| ID | Task | Duration | Start | Finish |
| --- | --- | --- | --- | --- |
| 97 | Relancer pour la caméra | 5d | 2019-06-17 | 2019-06-21 |
| 116 | **Communication pilote-stand** | 20d | 2019-10-01 | 2019-10-28 |
| 117 | Architecture | 20d | 2019-10-01 | 2019-10-28 |

Removed: 23 MIP-3D

Changed:

| ID | Task | Start | Finish | Duration | Complete |
| --- | --- | --- | --- | --- | --- |
| 17 | **Livrables** |  | 2019-06-07 → 2019-06-06 (-1d) | 23d → 22d | 17% → 32% |
| 19 | MSP |  |  |  | 50% → 63% |
| 20 | CdCF |  |  |  | 0% → 87% |
| 21 | KPI |  | 2019-05-31 → 2019-06-05 (+5d) | 5d → 8d |  |
| 22 | CCA |  | 2019-05-31 → 2019-06-05 (+5d) | 5d → 8d |  |
| 23 | Rapport de PE |  | 2019-06-04 → 2019-06-06 (+2d) | 10d → 12d |  |
| 94 | **SEISM** |  | 2019-07-05 → 2019-10-28 (+115d) | 33d → 114d | 15% → 33% |
| 95 | **Démarchage** |  | 2019-05-30 → 2019-06-21 (+22d) | 7d → 23d | 0% → 58% |
| 96 | Caméra de casque |  |  |  | 0% → 100% |
| 98 | **Faisceau** |  | 2019-06-21 → 2019-06-28 (+7d) | 23d → 28d | 9% → 21% |
| 99 | CdCF |  | 2019-05-24 → 2019-05-31 (+7d) | 3d → 8d |  |
| 100 | Architecture Faisceau | 2019-05-27 → 2019-06-03 (+7d) | 2019-05-31 → 2019-06-07 (+7d) |  |  |
| 101 | Faisceau HV | 2019-06-03 → 2019-06-10 (+7d) | 2019-06-07 → 2019-06-14 (+7d) |  |  |
| 102 | Batterie | 2019-06-10 → 2019-06-17 (+7d) | 2019-06-21 → 2019-06-28 (+7d) |  |  |
| 103 | Faisceau LV | 2019-06-03 → 2019-06-10 (+7d) | 2019-06-14 → 2019-06-21 (+7d) |  |  |
| 104 | **Tableau de bord** |  |  |  | 0% → 61% |
| 105 | CdCF |  | 2019-05-24 → 2019-05-31 (+7d) | 3d → 8d | 0% → 100% |
| 106 | Architecture | 2019-05-27 → 2019-06-03 (+7d) |  | 10d → 5d |  |
| 107 | **Passage de rapport** |  |  |  | 30% → 37% |
| 108 | CdCF |  | 2019-05-24 → 2019-05-31 (+7d) | 3d → 8d |  |
| 109 | Contacter TDN | 2019-05-27 → 2019-06-03 (+7d) | 2019-05-29 → 2019-06-05 (+7d) |  |  |
| 110 | Architecture | 2019-05-27 → 2019-06-03 (+7d) |  | 10d → 5d |  |
| 112 | **Télémétrie** |  |  |  | 13% → 34% |
| 113 | CdCF |  | 2019-05-24 → 2019-05-31 (+7d) | 3d → 8d |  |
| 114 | Architecture | 2019-05-27 → 2019-06-03 (+7d) |  | 10d → 5d |  |
